# OSG PKI Project

Schedule from MS Project, 2012-03-12 to 2012-10-05.
FNAL

## Calendars

- Standard: Mon-Fri 08:00-12:00, 13:00-17:00; Sat-Sun off.

## Resources

| Resource |
| --- |
| Welch |
| Basney |
| Altunay |
| Fischer |
| Sehgal |
| Padmanabhan |

## Schedule

| ID | WBS | Task | Duration | Start | Finish | Predecessors | Total slack | Free slack |
| --- | --- | --- | --- | --- | --- | --- | --- | --- |
| 1 | 1 | **Planning Phase** | 40d | 2012-03-12 | 2012-05-04 |  | 0d |  |
| 2 | 1.1 | Document Technical Plan | 20d | 2012-03-12 | 2012-04-06 |  | 0d |  |
| 3 | 1.2 | Document Transition Plan | 20d | 2012-04-09 | 2012-05-04 | 2 | 100d |  |
| 4 | 1.3 | Document Communications Plan | 10d | 2012-04-09 | 2012-04-20 | 2 | 110d |  |
| 5 | 1.4 | Document Acceptance Test Plan | 20d | 2012-04-09 | 2012-05-04 | 2 | 0d |  |
| 6 | 1.5 | Document Training Plan | 10d | 2012-04-09 | 2012-04-20 | 2 | 105d | 0d |
| 7 | 1.6 | Develop WBS and Timeline | 5d | 2012-04-23 | 2012-04-27 | 6 | 105d |  |
| 8 | 2 | **Development Phase** | 115d | 2012-03-12 | 2012-08-17 |  | 35d |  |
| 9 | 2.1 | **Develop the OSG CA web service front-end and integrate with the DigiCert CA** | 60d | 2012-05-07 | 2012-07-27 |  | 0d |  |
| 10 | 2.1.1 | Develop software and associated documentation | 30d | 2012-05-07 | 2012-06-15 | 5 | 0d |  |
| 11 | 2.1.2 | Review by the OSG software area of the resulting code and support documentation. | 10d | 2012-06-18 | 2012-06-29 | 10 | 0d |  |
| 12 | 2.1.3 | Developer Testing of New Solutions | 20d | 2012-07-02 | 2012-07-27 | 11 | 0d |  |
| 13 | 2.2 | Define changes to operational procedures, policy and other changes defined in the Planning phase. | 15d | 2012-03-12 | 2012-03-30 |  | 110d | 0d |
| 14 | 2.3 | Define Contingency Plan elements for the event that the DigiCert CA becomes unavailable; and conduct an OSG internal review | 15d | 2012-04-02 | 2012-04-20 | 13 | 110d |  |
| 15 | 2.4 | Conduct Acceptance Testing of System | 15d | 2012-07-30 | 2012-08-17 | 12 | 0d |  |
| 16 | 2.5 | Update Transition Plan | 3d | 2012-07-30 | 2012-08-01 | 12 | 47d |  |
| 17 | 2.6 | Update Training Plan | 3d | 2012-07-30 | 2012-08-01 | 12 | 47d |  |
| 18 | 2.7 | Update Communications Plan | 3d | 2012-07-30 | 2012-08-01 | 12 | 47d |  |
| 19 | 3 | **Deployment Phase** | 50d | 2012-07-02 | 2012-09-07 |  | 20d |  |
| 20 | 3.1 | Execute Training Plan for OSG Staff | 15d | 2012-08-20 | 2012-09-07 | 15 | 20d |  |
| 21 | 3.2 | **Deploy the OSG CA - the OSG web front-end and operations components** | 50d | 2012-07-02 | 2012-09-07 |  | 20d |  |
| 22 | 3.2.1 | Procure Hardware | 10d | 2012-07-02 | 2012-07-13 | 11 | 50d | 0d |
| 23 | 3.2.2 | New Server Setup | 10d | 2012-07-16 | 2012-07-27 | 22 | 50d |  |
| 24 | 3.2.3 | Install Software | 5d | 2012-08-20 | 2012-08-24 | 15 | 0d |  |
| 25 | 3.2.4 | Friendly User Testing | 10d | 2012-08-27 | 2012-09-07 | 24 | 0d |  |
| 26 | 3.3 | Implement changes to operational procedures, policy and other changes defined in the Planning phase. | 10d | 2012-08-20 | 2012-08-31 | 15 | 25d |  |
| 27 | 3.4 | Implement contingency Plan elements for the event that the DigiCert CA becomes unavailable | 10d | 2012-08-20 | 2012-08-31 | 15 | 25d |  |
| 28 | 3.5 | Transfer new software packages ownership to OSG Software team | 5d | 2012-08-20 | 2012-08-24 | 15 | 30d |  |

| ID | WBS | Task | Duration | Start | Finish | Predecessors | Total slack |
| --- | --- | --- | --- | --- | --- | --- | --- |
| 29 | 4 | **Transition** | 20d | 2012-09-10 | 2012-10-05 |  | 0d |
| 30 | 4.1 | Execute Communications Plan | 4d | 2012-09-10 | 2012-09-13 | 25 | 16d |
| 31 | 4.2 | Execute Training Plan for User Community | 20d | 2012-09-10 | 2012-10-05 | 25 | 0d |
